# ProjetoAshtanga

Schedule from MS Project, 2019-09-02 to 2019-12-16, costs in $.

## Calendars

- Padrão: Mon-Fri 08:00-12:00, 13:00-17:00; Sat-Sun off.

## Resources

| Resource | Rate |
| --- | --- |
| Gabriel Rocha | 20 |
| Gabriel Marra | 20 |
| Tomas | 20 |
| Leonardo | 20 |

## Schedule

| ID | WBS | Task | Type | Duration | Start | Finish | Predecessors | Total slack | Free slack | Resources | Work | Cost |
| --- | --- | --- | --- | --- | --- | --- | --- | --- | --- | --- | --- | --- |
| 1 | 1 | **Projeto AshTanga** |  | 75.5d? | 2019-09-02 08:00 | 2019-12-16 12:00 |  |  |  |  | 278.5h | 5,390 |
| 2 | 1.1 | **Prospecção** |  | 15d | 2019-09-02 08:00 | 2019-09-20 20:00 |  | 18d |  |  | 14.5h | 290 |
| 3 | 1.1.1 | **PTEC** |  | 6d | 2019-09-02 08:00 | 2019-09-09 20:00 |  | 18d |  |  | 10h | 200 |
| 4 | 1.1.1.1 | Estudar domínio de aplicação |  | 1d | 2019-09-02 08:00 | 2019-09-02 17:00 |  | 18d | 0d | Gabriel Marra | 1h | 20 |
| 5 | 1.1.1.2 | Reunir-se com o fornecedor de requisitos |  | 1.12d | 2019-09-02 18:00 | 2019-09-04 21:00 | 4 | 18d | 0d | Gabriel Rocha | 3h | 60 |
| 6 | 1.1.1.3 | Redigir PTEC |  | 1d | 2019-09-05 08:00 | 2019-09-05 17:00 | 5 | 18d | 0d | Gabriel Marra | 5h | 100 |
| 7 | 1.1.1.4 | Revisar PTEC |  | 1d | 2019-09-05 18:00 | 2019-09-09 20:00 | 6 | 18d | 0d | Gabriel Rocha | 1h | 20 |
| 8 | 1.1.1.5 | Aprovar PTEC | milestone | 0d | 2019-09-09 20:00 | 2019-09-09 20:00 | 7 | 18.88d | 0d |  |  |  |
| 9 | 1.1.2 | **Est. Prel. Tam** |  | 6d | 2019-09-09 20:00 | 2019-09-17 20:00 |  | 60d | 0d |  | 2h | 40 |
| 10 | 1.1.2.1 | Estimar tamanho do projeto |  | 1d | 2019-09-09 20:00 | 2019-09-12 22:00 | 7 | 60d | 0d | Tomas | 1h | 20 |
| 11 | 1.1.2.2 | Revisar estimativa de tamanho do projeto |  | 2d | 2019-09-13 08:00 | 2019-09-17 20:00 | 10 | 60d |  | Gabriel Marra; Gabriel Rocha | 1h | 20 |
| 12 | 1.1.3 | **Est. Prel. Cronograma e orçamento** |  | 3d | 2019-09-18 08:00 | 2019-09-20 20:00 |  | 60d |  |  | 2.5h | 50 |
| 13 | 1.1.3.1 | Elaborar cronograma e orçamento preliminares |  | 1d | 2019-09-18 08:00 | 2019-09-18 17:00 | 9 | 60d | 0d | Gabriel Marra | 2h | 40 |
| 14 | 1.1.3.2 | Revisar cronograma e orçamento preliminares |  | 1d | 2019-09-18 18:00 | 2019-09-20 20:00 | 13 | 60d |  | Gabriel Rocha | 0.5h | 10 |
| 15 | 1.2 | **Análise** |  | 37d | 2019-09-10 08:00 | 2019-10-30 17:00 |  | 1d |  |  | 52h | 1,040 |
| 16 | 1.2.1 | **Documentod de requisitos** |  | 4.75d | 2019-09-10 08:00 | 2019-09-16 15:00 |  | 18.25d |  |  | 30h | 600 |
| 17 | 1.2.1.1 | Reunir-se com o fornecedor de requisitos |  | 0.75d | 2019-09-10 08:00 | 2019-09-10 15:00 | 8 | 18.88d | 0d | Gabriel Marra | 6h | 120 |
| 18 | 1.2.1.2 | Elaborar DRE |  | 2d | 2019-09-10 15:00 | 2019-09-12 15:00 | 17 | 18.88d | 0d | Gabriel Marra | 18h | 360 |
| 19 | 1.2.1.3 | Revisar DRE |  | 0.38d | 2019-09-12 15:00 | 2019-09-13 15:00 | 18 | 18.25d | 0d | Leonardo | 3h | 60 |
| 20 | 1.2.1.4 | Submeter DRE para aprovação |  | 0.38d | 2019-09-13 15:00 | 2019-09-16 15:00 | 19 | 18.25d | 0d | Leonardo | 3h | 60 |
| 21 | 1.2.2 | **MRB** |  | 1d | 2019-10-29 20:00 | 2019-10-30 17:00 |  | 0d |  |  | 11h | 220 |
| 22 | 1.2.2.1 | Elaborar MRB | manual | 1d | 2019-10-29 20:00 | 2019-10-30 12:00 | 20FS+2.5% |  |  | Gabriel Marra | 8h | 160 |
| 23 | 1.2.2.2 | Revisar MRB | manual | 1d | 2019-10-30 14:00 | 2019-10-31 14:00 | 22 |  |  | Leonardo | 3h | 60 |
| 24 | 1.2.3 | **Plano do projeto** |  | 8.25d | 2019-09-16 15:00 | 2019-09-26 19:00 |  | 25d |  |  | 11h | 220 |
| 25 | 1.2.3.1 | Elaborar plano do projeto |  | 1.25d | 2019-09-16 15:00 | 2019-09-17 17:00 | 20 | 25d | 0d | Gabriel Marra | 8h | 160 |
| 26 | 1.2.3.2 | Revisar plano do projeto |  | 2.75d | 2019-09-17 18:00 | 2019-09-26 19:00 | 25 | 25d | 0d | Gabriel Rocha | 3h | 60 |

| ID | WBS | Task | Duration | Start | Finish | Predecessors | Total slack | Free slack | Resources | Work | Cost |
| --- | --- | --- | --- | --- | --- | --- | --- | --- | --- | --- | --- |
| 27 | 1.3 | **Projeto** | 11d | 2019-09-26 20:00 | 2019-10-11 17:00 |  | 25d |  |  | 15h | 300 |
| 28 | 1.3.1 | **Diagrama de classes** | 4d | 2019-09-26 20:00 | 2019-10-02 17:00 |  | 25d |  |  | 10h | 200 |
| 29 | 1.3.1.1 | Elaborar Diagrama de classes | 0.62d | 2019-09-26 20:00 | 2019-09-30 21:00 | 26 | 25d | 0d | Tomas | 5h | 100 |
| 30 | 1.3.1.2 | Revisar Diagrama de classes | 1.12d | 2019-10-01 08:00 | 2019-10-02 09:00 | 29 | 25.88d | 0.5d | Gabriel Marra | 2h | 40 |
| 31 | 1.3.1.3 | Atualizar MRB | 0.38d | 2019-10-02 14:00 | 2019-10-02 17:00 | 30 | 52d |  | Leonardo | 3h | 60 |
| 32 | 1.3.2 | **Modelo entidade relacionamento** | 7d | 2019-10-02 18:00 | 2019-10-11 17:00 |  | 25d |  |  | 5h | 100 |
| 33 | 1.3.2.1 | Elaborar MER | 2.62d | 2019-10-02 18:00 | 2019-10-10 21:00 | 30 | 25d | 0.62d | Gabriel Rocha | 3h | 60 |
| 34 | 1.3.2.2 | Revisar MER | 0.38d | 2019-10-11 14:00 | 2019-10-11 17:00 | 33 | 25d | 0d | Leonardo | 2h | 40 |
| 35 | 1.4 | **Implementação** | 46.25d? | 2019-09-16 15:00 | 2019-11-19 22:00 |  | 18.5d |  |  | 190h | 3,760 |
| 36 | 1.4.1 | **Release 00** | 1d? | 2019-10-31 08:00 | 2019-10-31 17:00 |  | 31.5d |  |  | 2h |  |
| 37 | 1.4.1.1 | Entregar os documentos | 1d? | 2019-10-31 08:00 | 2019-10-31 17:00 | 20, 26, 23 | 31.5d |  |  | 2h |  |
| 38 | 1.4.2 | **Release 01** | 39.25d? | 2019-09-16 15:00 | 2019-11-08 21:00 |  | 18.88d |  |  | 84h | 1,680 |
| 39 | 1.4.2.1 | Implementar RFS01 | 1.88d | 2019-10-14 08:00 | 2019-10-15 16:00 | 34 | 25.12d | 0d | Gabriel Marra | 15h | 300 |
| 40 | 1.4.2.2 | Implementar RFS02 | 1.38d | 2019-10-15 20:00 | 2019-10-22 21:00 | 39 | 25d | 0d | Tomas | 11h | 220 |
| 41 | 1.4.2.3 | Implementar RFS03 | 1.5d | 2019-10-23 14:00 | 2019-10-28 17:00 | 40 | 25d | 0d | Leonardo [133.3%] | 16h | 320 |
| 42 | 1.4.2.4 | Implementar RFS04 | 2.25d | 2019-10-28 20:00 | 2019-11-07 22:00 | 41 | 25d | 1d | Tomas | 18h | 360 |
| 43 | 1.4.2.5 | Implementar RFS10 | 2.25d? | 2019-09-16 15:00 | 2019-09-24 15:00 | 20 | 18.25d | 0d | Leonardo | 18h | 360 |
| 44 | 1.4.2.6 | Testar RFS01 | 0.12d? | 2019-10-15 16:00 | 2019-10-15 17:00 | 39 | 43.5d |  | Gabriel Marra | 1h | 20 |
| 45 | 1.4.2.7 | Testar RFS02 | 0.33d? | 2019-10-23 08:00 | 2019-10-23 10:40 | 40 | 38.17d |  | Gabriel Marra [37.5%] | 1h | 20 |
| 46 | 1.4.2.8 | Testar RFS03 | 0.25d? | 2019-10-29 14:00 | 2019-10-29 16:00 | 41 | 33.12d |  | Leonardo [50%] | 1h | 20 |
| 47 | 1.4.2.9 | Testar RFS04 | 0.12d? | 2019-11-08 20:00 | 2019-11-08 21:00 | 42 | 25d |  | Tomas | 1h | 20 |
| 48 | 1.4.2.10 | Testar RFS10 | 0.12d? | 2019-09-24 15:00 | 2019-09-24 16:00 | 43 | 18.69d | 0d | Gabriel Marra | 1h | 20 |
| 49 | 1.4.2.11 | Atualizar Status Report | 0.12d? | 2019-09-24 16:00 | 2019-09-24 17:00 | 48 | 18.69d | 0d | Gabriel Marra | 1h | 20 |
| 50 | 1.4.3 | **Release 02** | 21.92d | 2019-09-25 14:00 | 2019-10-25 13:20 |  | 18.12d |  |  | 87h | 1,740 |
| 51 | 1.4.3.1 | Implementar RFS05 | 1.75d | 2019-09-25 14:00 | 2019-10-01 16:00 | 49FS+5% | 18.12d | 0.12d | Leonardo | 14h | 280 |
| 52 | 1.4.3.2 | Implementar RFS06 | 1.62d | 2019-10-01 20:00 | 2019-10-09 21:00 | 51 | 18d | 0.62d | Tomas | 13h | 260 |
| 53 | 1.4.3.3 | Implementar RFS07 | 2.75d | 2019-10-10 18:00 | 2019-10-21 19:00 | 52 | 18d | 0d | Gabriel Rocha | 16h | 320 |
| 54 | 1.4.3.4 | Implementar RFS08 | 1.62d | 2019-10-22 08:00 | 2019-10-23 14:00 | 53 | 18.46d | 0d | Gabriel Marra | 18h | 360 |
| 55 | 1.4.3.5 | Implementar RFS09 | 1.67d | 2019-10-23 14:00 | 2019-10-25 10:20 | 54 | 18.46d | 0d | Gabriel Marra [150%] | 20h | 400 |
| 56 | 1.4.3.6 | Testar RFS05 | 0.12d | 2019-10-01 20:00 | 2019-10-01 21:00 | 51 | 53d |  | Tomas | 1h | 20 |
| 57 | 1.4.3.7 | Testar RFS06 | 0.12d | 2019-10-10 14:00 | 2019-10-10 15:00 | 52 | 46.25d |  | Leonardo | 1h | 20 |
| 58 | 1.4.3.8 | Testar RFS07 | 0.12d | 2019-10-21 20:00 | 2019-10-21 21:00 | 53 | 39d |  | Tomas | 1h | 20 |
| 59 | 1.4.3.9 | Testar RFS08 | 0.12d | 2019-10-23 18:00 | 2019-10-23 19:00 | 54 | 37d |  | Gabriel Rocha | 1h | 20 |
| 60 | 1.4.3.10 | Testar RFS09 | 0.12d | 2019-10-25 10:20 | 2019-10-25 11:20 | 55 | 18.46d | 0d | Gabriel Marra | 1h | 20 |
| 61 | 1.4.3.11 | Atualizar status Report | 0.12d | 2019-10-25 11:20 | 2019-10-25 13:20 | 60 | 18.46d | 0.46d | Gabriel Marra | 1h | 20 |

| ID | WBS | Task | Type | Duration | Start | Finish | Predecessors | Total slack | Free slack | Resources | Work | Cost |
| --- | --- | --- | --- | --- | --- | --- | --- | --- | --- | --- | --- | --- |
| 62 | 1.4.4 | **Release 03** |  | 17d | 2019-10-25 18:00 | 2019-11-19 22:00 |  | 18d |  |  | 17h | 340 |
| 63 | 1.4.4.1 | Implementar RFS11 |  | 2.62d | 2019-10-25 18:00 | 2019-11-04 21:00 | 61 | 18d | 0.62d | Gabriel Rocha | 15h | 300 |
| 64 | 1.4.4.2 | Testar RFS11 |  | 0.12d | 2019-11-05 14:00 | 2019-11-05 15:00 | 63 | 18.25d | 0.25d | Leonardo | 1h | 20 |
| 65 | 1.4.4.3 | Atualizar Status Report |  | 2.75d | 2019-11-05 20:00 | 2019-11-19 22:00 | 64 | 18d |  | Tomas [4.5%] | 1h | 20 |
| 66 | 1.5 | **Fechamento** |  | 3d | 2019-11-04 08:00 | 2019-11-06 17:00 |  |  |  |  | 7h |  |
| 67 | 1.5.1 | Elaborar termo de encerramento do projeto | manual | 1d? | 2019-09-23 09:00 | 2019-09-24 09:00 | 49 |  |  |  | 5h |  |
| 68 | 1.5.2 | Revisar termo de encerramento | manual | 1d? | 2019-09-24 09:00 | 2019-09-25 09:00 | 67 |  |  |  | 2h |  |
| 69 | 1.5.3 | Encaminhar termo para o cliente | manual | 1d? | 2019-09-25 09:00 | 2019-09-26 09:00 | 68 |  |  |  |  |  |
